# BLUEsatBalloonLaunchSchedule

Schedule from MS Project, 2013-08-10 to 2014-10-14, 24 hours a day, A marks actual dates.

## Calendars

- 24 Hours: Mon-Sun 00:00-23:59.

## Schedule

| ID | WBS | Task | Type | Duration | Start | Finish | Predecessors | Complete | Remaining |
| --- | --- | --- | --- | --- | --- | --- | --- | --- | --- |
| 1 | 1 | **Fund Raising** |  | 25.91w | 2013-08-24 A | 2014-02-21 |  | 85% | 3.89w |
| 2 | 1.1 | Determine Total Project Budget | manual | 1.91w | 2013-08-24 A | 2013-09-07 A | 8 | 100% |  |
| 3 | 1.2 | Write Funding Proposal | manual | 21.38d | 2013-09-07 A | 2013-09-28 A | 2 | 100% |  |
| 4 | 1.3 | Raise Initial in-project budget ($5k AUD Approx) | manual | 23.38d | 2013-09-07 A | 2013-09-30 A | 2 | 100% |  |
| 5 | 1.4 | Raise Budget from Faculty (10k AUD Approx) | manual | 35.38d | 2013-09-28 A | 2013-11-02 A | 3FF | 100% |  |
| 6 | 1.5 | Raise Budget from External Sponsors (20k Approx) | manual | 140.25d | 2013-09-28 A | 2014-02-15 | 3 | 75% | 35.06d |
| 7 | 2 | **Satellite Flight Model Production** |  | 32.05w | 2013-08-10 A | 2014-03-22 |  | 59% | 13.02w |
| 8 | 2.1 | Planning | manual | 2.05w | 2013-08-10 A | 2013-08-24 A |  | 100% |  |
| 9 | 2.2 | **Electronics Rebuild** |  | 182.38d | 2013-08-10 A | 2014-02-08 |  | 86% | 26.38d |
| 10 | 2.2.1 | Existing Electrical Stock Inventory | manual | 5.05w | 2013-08-10 A | 2013-09-14 A |  | 100% |  |
| 11 | 2.2.2 | Electrical Parts Sourcing and Order Creation | manual | 8.05w | 2013-08-10 A | 2013-10-05 A | 10 | 100% |  |
| 12 | 2.2.3 | Order all Electrical Components and PCBs | milestone, manual | 0d | 2013-10-05 A | 2013-10-05 A | 4, 11 | 100% |  |
| 13 | 2.2.4 | Electrical components Delivery | manual | 3w | 2013-10-05 A | 2013-10-26 A | 12 | 100% |  |
| 14 | 2.2.5 | PCB assembly | manual | 15w | 2013-10-26 A | 2014-02-08 | 13 | 70% | 4.5w |
| 15 | 2.3 | **Groundstation Interface Design and Build** |  | 126.38d | 2013-11-02 A | 2014-03-08 |  | 36% | 80.82d |
| 16 | 2.3.1 | Groundstation Interface PCB Design | manual | 13.05w | 2013-11-02 A | 2014-02-01 |  | 50% | 6.53w |
| 17 | 2.3.2 | Parts + PCB Order and delivery | manual | 3.05w | 2014-02-01 | 2014-02-22 | 16 |  |  |
| 18 | 2.3.3 | PCB assembly | manual | 1w | 2014-02-22 | 2014-03-01 | 17 |  |  |
| 19 | 2.3.4 | Testing and Eval | manual | 1w | 2014-03-01 | 2014-03-08 | 18 |  |  |
| 20 | 2.4 | **Integration and Testing** |  | 42d | 2014-02-08 | 2014-03-22 | 14 |  |  |
| 21 | 2.4.1 | CSC Functional Test | manual | 1w | 2014-02-08 | 2014-02-15 | 14 |  |  |
| 22 | 2.4.2 | Power System Test | manual | 1w | 2014-02-08 | 2014-02-15 | 14 |  |  |
| 23 | 2.4.3 | Communications Test | manual | 1w | 2014-02-15 | 2014-02-22 | 21 |  |  |
| 24 | 2.4.4 | Telemetry Test | manual | 1w | 2014-02-15 | 2014-02-22 | 21, 22 |  |  |
| 25 | 2.4.5 | Electrical Integration Test | manual | 2w | 2014-02-22 | 2014-03-08 | 23, 24 |  |  |
| 26 | 2.4.6 | Full Electrical Funtionality | milestone, manual | 0d | 2014-03-08 | 2014-03-08 | 25 |  |  |
| 27 | 2.4.7 | Full Assembly Functional and Performance Test | manual | 2w | 2014-03-08 | 2014-03-22 | 25 |  |  |
| 28 | 2.4.8 | Flight Model Complete | milestone, manual | 0d | 2014-03-22 | 2014-03-22 | 27 |  |  |

| ID | WBS | Task | Type | Duration | Start | Finish | Predecessors | Complete | Remaining | Total slack |
| --- | --- | --- | --- | --- | --- | --- | --- | --- | --- | --- |
| 29 | 3 | **Launch Vehicle Preparation** |  | 378.33d | 2013-08-17 A | 2014-08-30 |  | 26% | 280.44d |  |
| 30 | 3.1 | Research and Consultation with ADFA@UNSW | manual | 159.38d | 2013-08-17 A | 2014-01-23 A |  | 100% |  |  |
| 31 | 3.2 | Architect interface for flight hardware | manual | 7.38d | 2014-01-18 A | 2014-01-25 A |  | 100% |  |  |
| 32 | 3.3 | Source and purchase CPU | manual | 7.38d | 2014-01-25 | 2014-02-01 |  |  |  |  |
| 33 | 3.4 | Source and purchase ADS-B Unit | manual | 4w | 2014-01-25 | 2014-02-22 |  |  |  |  |
| 34 | 3.5 | Integrate ADS-B Unit with CPU | manual | 8w | 2014-02-22 | 2014-04-19 | 32, 33 |  |  |  |
| 35 | 3.6 | Design Balloon Seperation mechanism | manual | 4w | 2014-01-25 A | 2014-02-22 |  | 25% | 3w |  |
| 36 | 3.7 | Design Parachute Seperation mechanism | manual | 4w | 2014-02-22 | 2014-03-22 |  |  |  |  |
| 37 | 3.8 | Design, choose and source SDR for RF input | manual | 4w | 2014-02-22 | 2014-03-22 |  |  |  |  |
| 38 | 3.9 | Integrate SDR with CPU | manual | 8w | 2014-03-22 | 2014-05-17 | 37, 32 |  |  |  |
| 39 | 3.10 | Design, choose and source APRS Locator + GPS | manual | 4w | 2014-03-15 | 2014-04-12 |  |  |  |  |
| 40 | 3.11 | Design Power Supply unit for all of flight hardware | manual | 4w | 2014-04-12 | 2014-05-10 | 31, 32, 35, 36, 37, 39 |  |  |  |
| 41 | 3.12 | Contingency | manual | 21.38d | 2014-05-10 | 2014-05-31 |  |  |  |  |
| 42 | 3.13 | Critical Design Review | milestone, manual | 0w | 2014-05-31 | 2014-05-31 | 31, 32, 35, 36, 37, 39, 40 |  |  |  |
| 43 | 3.14 | Integration and Testing of electrical components | manual | 12w | 2014-05-10 | 2014-08-02 | 31, 32, 35, 36, 37, 39, 40 |  |  |  |
| 44 | 3.15 | Design of Physical platform | manual | 5w | 2014-05-10 | 2014-06-14 | 31, 32, 35, 36, 37, 39, 40 |  |  |  |
| 45 | 3.16 | Fabrication, assembly and functional testing of all flight hardware | manual | 11w | 2014-06-14 | 2014-08-30 | 44 |  |  |  |
| 46 | 4 | **Launch** |  | 43.35d | 2014-09-01 | 2014-10-14 |  |  |  | 0d |
| 47 | 4.1 | Flight Readiness Review | milestone, manual | 0d | 2014-09-01 | 2014-09-01 |  |  |  |  |
| 48 | 4.2 | Transport of materials to Wagga | manual | 1w | 2014-09-01 | 2014-09-08 |  |  |  |  |
| 49 | 4.3 | Setup of groundstation hardware | manual | 1w | 2014-09-08 | 2014-09-15 |  |  |  |  |
| 50 | 4.4 | Setup of launch apparatus | manual | 1w | 2014-09-15 | 2014-09-22 |  |  |  |  |
| 51 | 4.5 | Last minute funcitonal tests | manual | 0.5w | 2014-09-22 | 2014-09-25 |  |  |  |  |
| 52 | 4.6 | Launch Window/Contingency | manual | 19.36d | 2014-09-25 | 2014-10-14 |  |  |  |  |
